# CSE Project

Schedule from MS Project, 2023-07-11 to 2024-06-03, A marks actual dates.
Hewlett-Packard

## Calendars

- Standard: Mon-Fri 08:00-12:00, 13:00-17:00; Sat-Sun off.

## Schedule

| ID | WBS | Task | Type | Duration | Start | Finish | Predecessors | Complete | Remaining | Total slack | Free slack |
| --- | --- | --- | --- | --- | --- | --- | --- | --- | --- | --- | --- |
| 1 | 1 | **CSE Academic Project** |  | 235d | 2023-07-11 A | 2024-06-03 |  | 57% | 100.42d |  |  |
| 2 | 1.1 | **Phase 1: 7th Semester Activities** |  | 98d | 2023-07-11 A | 2023-11-23 |  | 68% | 31.8d |  |  |
| 3 | 1.1.1 | **Project Startup** |  | 24d | 2023-07-11 A | 2023-08-11 A |  | 100% |  |  |  |
| 4 | 1.1.1.1 | Team Building | milestone | 0d | 2023-07-11 A | 2023-07-11 A |  | 100% |  |  |  |
| 5 | 1.1.1.2 | Brainstorm on Project Topic |  | 14d | 2023-07-11 A | 2023-07-28 A | 4 | 100% |  |  |  |
| 6 | 1.1.1.3 | Project agreed with Guide | milestone | 0d | 2023-07-28 A | 2023-07-28 A | 5 | 100% |  |  |  |
| 7 | 1.1.1.4 | Related Study & Documentation |  | 7d | 2023-07-29 A | 2023-08-08 A | 4 | 100% |  |  |  |
| 8 | 1.1.1.5 | Deliver Project Synopsis for Guide's review |  | 9d | 2023-07-29 A | 2023-08-10 A | 7 | 100% |  |  |  |
| 9 | 1.1.1.6 | Close review feedbacks | milestone | 0d | 2023-08-11 A | 2023-08-11 A | 8 | 100% |  |  |  |
| 10 | 1.1.1.7 | Project Synopsis Finalized | milestone | 0d | 2023-08-11 A | 2023-08-11 A | 9 | 100% |  |  |  |
| 11 | 1.1.2 | **Requirement Analysis** |  | 42d | 2023-08-14 A | 2023-10-10 | 3 | 99% | 0.16d | 32d |  |
| 12 | 1.1.2.1 | Gather Requirements |  | 7d | 2023-08-14 A | 2023-08-22 A |  | 100% |  |  |  |
| 13 | 1.1.2.2 | Prepare Draft Requirement Matrix | milestone | 0d | 2023-08-22 A | 2023-08-22 A | 12 | 100% |  |  |  |
| 14 | 1.1.2.3 | **Elaborate Rqmt & Document** |  | 36d | 2023-08-22 A | 2023-10-10 |  | 99% | 0.15d |  |  |
| 15 | 1.1.2.3.1 | REG & LGN Module analysis |  | 2d | 2023-08-22 A | 2023-08-23 A |  | 100% |  |  |  |
| 16 | 1.1.2.3.2 | PRF & PMNU Module analysis |  | 10d | 2023-08-22 A | 2023-09-04 A |  | 100% |  |  |  |
| 17 | 1.1.2.3.3 | UF & PVW Module analysis |  | 13d | 2023-08-22 A | 2023-09-07 A |  | 100% |  |  |  |
| 18 | 1.1.2.3.4 | PSTPRJ & OPVW Module Analysis |  | 30d | 2023-08-22 A | 2023-10-02 A |  | 100% |  |  |  |
| 19 | 1.1.2.3.5 | CPVW & LVW Module Analysis |  | 31d | 2023-08-22 A | 2023-10-03 A |  | 100% |  |  |  |
| 20 | 1.1.2.3.6 | RCOLLAB & TMOD Module analysis |  | 30d | 2023-08-22 A | 2023-10-02 A |  | 100% |  |  |  |
| 21 | 1.1.2.3.7 | RWARN, CWARN, IRBUP & CHAT Module Analysis |  | 6d | 2023-10-03 A | 2023-10-10 A | 18 | 100% |  |  |  |
| 22 | 1.1.2.3.8 | CCOLAB & UPF Module Analysis |  | 5d | 2023-10-03 A | 2023-10-09 A | 18 | 100% |  |  |  |
| 23 | 1.1.2.3.9 | ACDEL & LGOUT Module Analysis |  | 2d | 2023-09-05 A | 2023-09-06 A | 16 | 100% |  |  |  |
| 24 | 1.1.2.3.10 | NFS, NFCAP, NFCOMP, NFRA, NFMM, NFU, NFSC & NFPDA module analysis |  | 5d | 2023-10-04 A | 2023-10-10 | 19 | 89% | 0.55d | 11.4d | 10d |
| 25 | 1.1.2.4 | Update Requirement Matrix |  | 6d | 2023-09-20 A | 2023-09-27 A | 14 | 100% |  |  |  |
| 26 | 1.1.2.5 | Requirement Matrix Finalized | milestone | 0d | 2023-09-27 | 2023-09-27 | 25 |  |  | 41d |  |

| ID | WBS | Task | Type | Duration | Start | Finish | Predecessors | Complete | Remaining | Total slack | Free slack |
| --- | --- | --- | --- | --- | --- | --- | --- | --- | --- | --- | --- |
| 27 | 1.1.3 | **Design** |  | 90d? | 2023-07-11 A | 2023-11-13 |  | 52% | 43.23d? | 2d |  |
| 28 | 1.1.3.1 | **Prototype Design** |  | 75d | 2023-07-11 A | 2023-10-23 |  | 42% | 43.76d | 17d |  |
| 29 | 1.1.3.1.1 | **UI-Design** |  | 70d | 2023-07-11 A | 2023-10-16 |  | 49% | 35.94d | 18d |  |
| 30 | 1.1.3.1.1.1 | REG-1.1 | milestone | 0d | 2023-07-11 A | 2023-07-11 A | 15 | 100% |  |  |  |
| 31 | 1.1.3.1.1.2 | LGN-1 | milestone | 0d | 2023-07-11 A | 2023-07-11 A | 15 | 100% |  |  |  |
| 32 | 1.1.3.1.1.3 | **PRF-1** |  | 8d | 2023-09-05 A | 2023-09-14 A | 16 | 100% |  |  |  |
| 33 | 1.1.3.1.1.3.1 | PRF-1.1 |  | 4d | 2023-09-05 A | 2023-09-08 A | 16 | 100% |  |  |  |
| 34 | 1.1.3.1.1.3.2 | PRF-1.2 |  | 8d | 2023-09-05 A | 2023-09-14 A | 16 | 100% |  |  |  |
| 35 | 1.1.3.1.1.4 | **PMNU-1** |  | 3d | 2023-09-05 A | 2023-09-07 A | 16 | 100% |  |  |  |
| 36 | 1.1.3.1.1.4.1 | PMNU-1.1 |  | 3d | 2023-09-05 A | 2023-09-07 A | 16 | 100% |  |  |  |
| 37 | 1.1.3.1.1.4.2 | PMNU-1.2 |  | 3d | 2023-09-05 A | 2023-09-07 A | 16 | 100% |  |  |  |
| 38 | 1.1.3.1.1.5 | UF-1.1 |  | 4d | 2023-09-08 A | 2023-09-13 A | 17 | 100% |  |  |  |
| 39 | 1.1.3.1.1.6 | PSTPRJ-1 |  | 4d | 2023-10-03 A | 2023-10-06 A | 18 | 100% |  |  |  |
| 40 | 1.1.3.1.1.7 | **PVW-1** |  | 15d | 2023-09-08 A | 2023-09-28 | 17 | 44% | 8.4d | 30d |  |
| 41 | 1.1.3.1.1.7.1 | PVW-1.1 |  | 8d | 2023-09-08 A | 2023-09-19 | 17 | 75% | 2d | 0.6d | 0d |
| 42 | 1.1.3.1.1.7.2 | PVW-1.2 |  | 4d | 2023-09-20 A | 2023-09-25 | 41 | 15% | 3.4d | 0.45d | 0d |
| 43 | 1.1.3.1.1.7.3 | PVW-1.3 |  | 3d | 2023-09-26 | 2023-09-28 | 42 |  |  | 30d | 0d |
| 44 | 1.1.3.1.1.8 | OPVW-1 |  | 7d | 2023-10-03 | 2023-10-11 | 18 |  |  | 17d | 0d |
| 45 | 1.1.3.1.1.9 | CPVW-1 |  | 5d | 2023-10-04 | 2023-10-10 | 19 |  |  | 22d | 0d |
| 46 | 1.1.3.1.1.10 | **RCOLLAB-1** |  | 3d | 2023-10-03 | 2023-10-05 | 20 |  |  | 22d | 0d |
| 47 | 1.1.3.1.1.10.1 | RCOLLAB-1.1 |  | 1d | 2023-10-03 | 2023-10-03 | 20 |  |  | 22d | 0d |
| 48 | 1.1.3.1.1.10.2 | RCOLLAB-1.2 |  | 1d | 2023-10-03 | 2023-10-03 | 20 |  |  | 22d | 0d |
| 49 | 1.1.3.1.1.10.3 | RCOLLAB-1.3 |  | 1d | 2023-10-04 | 2023-10-04 | 47, 48 |  |  | 22d | 0d |
| 50 | 1.1.3.1.1.10.4 | RCOLLAB-1.4 |  | 1d | 2023-10-05 | 2023-10-05 | 49 |  |  | 22d |  |
| 51 | 1.1.3.1.1.11 | CCOLLAB-1 |  | 5d | 2023-10-10 | 2023-10-16 | 22 |  |  | 17d | 0d |
| 52 | 1.1.3.1.1.12 | TMOD-1 |  | 5d | 2023-10-03 | 2023-10-09 | 20 |  |  | 18d | 0d |

| ID | WBS | Task | Duration | Start | Finish | Predecessors | Complete | Remaining | Total slack | Free slack |
| --- | --- | --- | --- | --- | --- | --- | --- | --- | --- | --- |
| 53 | 1.1.3.1.2 | **Software Implementation** | 75d | 2023-07-11 A | 2023-10-23 |  | 35% | 48.46d | 17d |  |
| 54 | 1.1.3.1.2.1 | REG-1.1 | 3d | 2023-07-11 A | 2023-07-13 A | 30 | 100% |  |  |  |
| 55 | 1.1.3.1.2.2 | LGN-1 | 3d | 2023-07-11 A | 2023-07-13 A | 31 | 100% |  |  |  |
| 56 | 1.1.3.1.2.3 | **PRF-1** | 4d | 2023-09-18 A | 2023-09-21 | 32 | 38% | 2.5d | 39d |  |
| 57 | 1.1.3.1.2.3.1 | PRF-1.1 | 4d | 2023-09-18 A | 2023-09-21 | 32 | 25% | 3d | 39d |  |
| 58 | 1.1.3.1.2.3.2 | PRF-1.2 | 4d | 2023-09-18 A | 2023-09-21 | 32 | 50% | 2d | 39d |  |
| 59 | 1.1.3.1.2.4 | **PMNU-1** | 2d | 2023-09-08 A | 2023-09-11 |  | 59% | 0.83d | 47d |  |
| 60 | 1.1.3.1.2.4.1 | PMNU-1.1 | 2d | 2023-09-08 A | 2023-09-11 | 36 | 67% | 0.66d | 47d |  |
| 61 | 1.1.3.1.2.4.2 | PMNU-1.2 | 2d | 2023-09-08 A | 2023-09-11 | 37 | 50% | 1d | 47d |  |
| 62 | 1.1.3.1.2.5 | UF-1.1 | 5d | 2023-09-14 A | 2023-09-20 A | 38 | 100% |  |  |  |
| 63 | 1.1.3.1.2.6 | PSTPRJ-1 | 6d | 2023-09-14 A | 2023-09-21 A | 38 | 100% |  |  |  |
| 64 | 1.1.3.1.2.7 | **PVW-1** | 11d | 2023-09-20 A | 2023-10-04 |  | 35% | 7.15d | 30d |  |
| 65 | 1.1.3.1.2.7.1 | PVW-1.1 | 5d | 2023-09-20 A | 2023-09-26 | 41 | 75% | 1.25d | 36d |  |
| 66 | 1.1.3.1.2.7.2 | PVW-1.2 | 3d | 2023-09-26 A | 2023-09-28 | 42 | 15% | 2.55d | 34d |  |
| 67 | 1.1.3.1.2.7.3 | PVW-1.3 | 4d | 2023-09-29 | 2023-10-04 | 43 |  |  | 30d |  |
| 68 | 1.1.3.1.2.8 | OPVW-1 | 8d | 2023-10-12 | 2023-10-23 | 44 |  |  | 17d |  |
| 69 | 1.1.3.1.2.9 | CPVW-1 | 4d | 2023-10-11 | 2023-10-16 | 45 |  |  | 22d |  |
| 70 | 1.1.3.1.2.10 | **RCOLLAB-1** | 7d | 2023-10-06 | 2023-10-16 | 20 |  |  | 22d |  |
| 71 | 1.1.3.1.2.10.1 | RCOLLAB-1.1 | 1d | 2023-10-06 | 2023-10-06 | 46 |  |  | 24d | 2d |
| 72 | 1.1.3.1.2.10.2 | RCOLLAB-1.2 | 3d | 2023-10-06 | 2023-10-10 | 46 |  |  | 22d | 0d |
| 73 | 1.1.3.1.2.10.3 | RCOLLAB-1.3 | 2d | 2023-10-11 | 2023-10-12 | 71, 72 |  |  | 22d | 0d |
| 74 | 1.1.3.1.2.10.4 | RCOLLAB-1.4 | 2d | 2023-10-13 | 2023-10-16 | 73 |  |  | 22d |  |
| 75 | 1.1.3.1.2.11 | CCOLLAB-1 | 5d | 2023-10-17 | 2023-10-23 | 51 |  |  | 17d |  |
| 76 | 1.1.3.1.2.12 | TMOD-1 | 9d | 2023-10-10 | 2023-10-20 | 52 |  |  | 18d |  |

| ID | WBS | Task | Duration | Start | Finish | Predecessors | Complete | Remaining | Total slack | Free slack |
| --- | --- | --- | --- | --- | --- | --- | --- | --- | --- | --- |
| 77 | 1.1.3.2 | **Detailed Design & Figma Prototype** | 58d? | 2023-08-24 A | 2023-11-13 |  | 67% | 18.9d? | 2d |  |
| 78 | 1.1.3.2.1 | **REG-1** | 5d | 2023-08-24 A | 2023-08-30 A | 15 | 100% |  |  |  |
| 79 | 1.1.3.2.1.1 | REG-1.1 | 1d | 2023-08-24 A | 2023-08-24 A | 15 | 100% |  |  |  |
| 80 | 1.1.3.2.1.2 | REG-1.2 & 1.3 | 3d | 2023-08-25 A | 2023-08-29 A | 79 | 100% |  |  |  |
| 81 | 1.1.3.2.1.3 | REG-1.4 & 1.5 | 1d | 2023-08-30 A | 2023-08-30 A | 80 | 100% |  |  |  |
| 82 | 1.1.3.2.2 | **LGN-1** | 2d | 2023-08-24 A | 2023-08-25 A | 15 | 100% |  |  |  |
| 83 | 1.1.3.2.2.1 | LGN-1.1 | 1d | 2023-08-24 A | 2023-08-24 A | 15 | 100% |  |  |  |
| 84 | 1.1.3.2.2.2 | LGN-1.2 | 1d | 2023-08-25 A | 2023-08-25 A | 83 | 100% |  |  |  |
| 85 | 1.1.3.2.3 | **PRF-1** | 30d | 2023-09-05 A | 2023-10-16 A | 84, 16 | 100% |  |  |  |
| 86 | 1.1.3.2.3.1 | PRF-1.1 | 11d | 2023-09-05 A | 2023-09-19 A | 84, 16 | 100% |  |  |  |
| 87 | 1.1.3.2.3.2 | PRF-1.2 | 19d | 2023-09-20 A | 2023-10-16 A | 16, 86 | 100% |  |  |  |
| 88 | 1.1.3.2.4 | **PMNU-1** | 7d | 2023-09-05 A | 2023-09-13 A | 82, 16 | 100% |  |  |  |
| 89 | 1.1.3.2.4.1 | PMNU-1.1 | 4d | 2023-09-05 A | 2023-09-08 A | 82, 16 | 100% |  |  |  |
| 90 | 1.1.3.2.4.2 | PMNU-1.2 | 3d | 2023-09-11 A | 2023-09-13 A | 89 | 100% |  |  |  |
| 91 | 1.1.3.2.5 | PSTPRJ-1 | 6d | 2023-10-03 A | 2023-10-10 A | 90, 18 | 100% |  |  |  |
| 92 | 1.1.3.2.6 | **UF-1** | 4d | 2023-09-14 A | 2023-09-19 | 17, 90 | 75% | 1d | 0d |  |
| 93 | 1.1.3.2.6.1 | UF-1.1 | 2d | 2023-09-14 A | 2023-09-15 A | 17, 90 | 100% |  |  |  |
| 94 | 1.1.3.2.6.2 | UF-1.2 | 2d | 2023-09-18 A | 2023-09-19 | 93 | 50% | 1d | 0d |  |
| 95 | 1.1.3.2.7 | **PVW-1** | 22d | 2023-09-20 A | 2023-10-19 | 17, 94 | 50% | 11d | 19d |  |
| 96 | 1.1.3.2.7.1 | PVW-1.1 | 22d | 2023-09-20 A | 2023-10-19 | 17, 94 | 50% | 11d | 19d |  |
| 97 | 1.1.3.2.7.2 | PVW-1.2 | 7d | 2023-09-20 A | 2023-09-28 | 17, 94 | 50% | 3.5d | 3d | 0d |
| 98 | 1.1.3.2.7.3 | PVW-1.3 | 7d | 2023-09-29 A | 2023-10-09 | 97 | 50% | 3.5d | 3.5d | 0d |
| 99 | 1.1.3.2.8 | **OPVW-1** | 9d | 2023-10-10 A | 2023-10-20 | 18, 97 | 50% | 4.5d | 18d |  |
| 100 | 1.1.3.2.8.1 | OPVW-1.1 | 7d | 2023-10-10 A | 2023-10-18 | 18, 98 | 50% | 3.5d | 0.5d | 0d |
| 101 | 1.1.3.2.8.2 | OPVW-1.2 | 2d | 2023-10-19 A | 2023-10-20 | 100 | 50% | 1d | 18d |  |
| 102 | 1.1.3.2.8.3 | OPVW-1.3 | 2d | 2023-10-19 A | 2023-10-20 | 100 | 50% | 1d | 18d |  |
| 103 | 1.1.3.2.8.4 | OPVW-1.4 | 1d | 2023-10-19 A | 2023-10-19 | 100 | 50% | 0.5d | 19d |  |

| ID | WBS | Task | Duration | Start | Finish | Predecessors | Complete | Remaining | Total slack | Free slack |
| --- | --- | --- | --- | --- | --- | --- | --- | --- | --- | --- |
| 104 | 1.1.3.2.9 | **CPVW-1** | 10d | 2023-10-04 A | 2023-10-17 | 19, 97 | 50% | 5d | 21d |  |
| 105 | 1.1.3.2.9.1 | CPVW-1.1 | 7d | 2023-10-04 A | 2023-10-12 | 19, 97 | 50% | 3.5d | 1d | 0d |
| 106 | 1.1.3.2.9.2 | CPVW-1.2 | 3d | 2023-10-13 A | 2023-10-17 | 105 | 50% | 1.5d | 21d |  |
| 107 | 1.1.3.2.9.3 | CPVW-1.3 | 2d | 2023-10-13 A | 2023-10-16 | 105 | 50% | 1d | 22d |  |
| 108 | 1.1.3.2.9.4 | CPVW-1.4 | 2d | 2023-10-13 A | 2023-10-16 | 105 | 50% | 1d | 0d |  |
| 109 | 1.1.3.2.10 | **LVW-1** | 3d | 2023-10-17 A | 2023-10-19 | 19, 108 | 50% | 1.5d | 19d |  |
| 110 | 1.1.3.2.10.1 | LVW-1.1 | 3d | 2023-10-17 A | 2023-10-19 | 19, 108 | 50% | 1.5d | 19d |  |
| 111 | 1.1.3.2.10.2 | LVW-1.2 | 2d | 2023-10-17 A | 2023-10-18 | 19, 108 | 50% | 1d | 20d |  |
| 112 | 1.1.3.2.11 | **RCOLLAB-1** | 17d | 2023-10-11 A | 2023-11-02 | 20, 91 | 50% | 8.5d | 9d |  |
| 113 | 1.1.3.2.11.1 | RCOLLAB-1.1 | 1d | 2023-10-11 A | 2023-10-11 | 91, 20 | 50% | 0.5d | 25d |  |
| 114 | 1.1.3.2.11.2 | RCOLLAB-1.2 | 2d | 2023-10-11 A | 2023-10-12 | 91, 20 | 50% | 1d | 3.5d | 0d |
| 115 | 1.1.3.2.11.3 | RCOLLAB-1.3 | 7d | 2023-10-13 A | 2023-10-23 | 114 | 50% | 3.5d | 0d |  |
| 116 | 1.1.3.2.11.4 | RCOLLAB-1.4 | 6d | 2023-10-24 A | 2023-10-31 | 115 | 50% | 3d | 1d | 0d |
| 117 | 1.1.3.2.11.5 | RCOLLAB-1.5 | 2d | 2023-11-01 A | 2023-11-02 | 116 | 50% | 1d | 0d |  |
| 118 | 1.1.3.2.12 | **TMOD-1** | 10d | 2023-10-24 A | 2023-11-06 | 20, 115 | 50% | 5d | 1.5d | 0d |
| 119 | 1.1.3.2.12.1 | TMOD-1.1 | 4d | 2023-11-01 A | 2023-11-06 | 20, 117 | 50% | 2d | 1.5d |  |
| 120 | 1.1.3.2.12.2 | TMOD-1.2 | 2d | 2023-10-24 A | 2023-10-25 | 20, 115 | 50% | 1d | 9.5d |  |
| 121 | 1.1.3.2.13 | RWARN-1 & IRBUP-1 | 5d | 2023-11-07 A | 2023-11-13 | 21, 118 | 50% | 2.5d | 2d |  |
| 122 | 1.1.3.2.14 | CWARN-1 | 3d | 2023-11-07 A | 2023-11-09 | 21, 118 | 50% | 1.5d | 4d |  |
| 123 | 1.1.3.2.15 | **CCOLLAB-1** | 4d | 2023-10-24 A | 2023-10-27 | 22, 115 | 50% | 2d | 8.5d | 6d |
| 124 | 1.1.3.2.15.1 | CCOLLAB-1.1 | 1d | 2023-10-24 A | 2023-10-24 | 115 | 50% | 0.5d | 11.5d |  |
| 125 | 1.1.3.2.15.2 | CCOLLAB-1..2 | 1d | 2023-10-24 A | 2023-10-24 | 115 | 50% | 0.5d | 1.5d | 0d |
| 126 | 1.1.3.2.15.3 | CCOLLAB-1.3 | 3d | 2023-10-25 A | 2023-10-27 | 125 | 50% | 1.5d | 8.5d |  |
| 127 | 1.1.3.2.16 | CHAT-1 | 5d | 2023-11-07 A | 2023-11-13 | 21, 123 | 50% | 2.5d | 2d |  |

| ID | WBS | Task | Duration | Start | Finish | Predecessors | Complete | Remaining | Total slack |
| --- | --- | --- | --- | --- | --- | --- | --- | --- | --- |
| 128 | 1.1.3.2.17 | **UPF-1** | 3d | 2023-10-10 A | 2023-10-12 | 22, 86 | 50% | 1.5d | 24d |
| 129 | 1.1.3.2.17.1 | UPF-1.1 | 3d | 2023-10-10 A | 2023-10-12 | 22, 86 | 50% | 1.5d | 24d |
| 130 | 1.1.3.2.17.2 | UPF-1.2 | 3d | 2023-10-10 A | 2023-10-12 | 22, 86 | 50% | 1.5d | 24d |
| 131 | 1.1.3.2.18 | **ACDEL-1** | 1d | 2023-09-07 A | 2023-09-07 | 23, 84 | 50% | 0.5d | 49d |
| 132 | 1.1.3.2.18.1 | ACDEL-1.1 | 1d | 2023-09-07 A | 2023-09-07 | 23, 84 | 50% | 0.5d | 49d |
| 133 | 1.1.3.2.18.2 | ACDEL-1.2 | 1d | 2023-09-07 A | 2023-09-07 | 23, 84 | 50% | 0.5d | 49d |
| 134 | 1.1.3.2.19 | **LGOUT-1** | 1d | 2023-09-07 A | 2023-09-07 | 23, 84 | 50% | 0.5d | 49d |
| 135 | 1.1.3.2.19.1 | LGOUT-1.1 | 1d | 2023-09-07 A | 2023-09-07 | 23, 84 | 50% | 0.5d | 49d |
| 136 | 1.1.3.2.19.2 | LGOUT-1.2 | 1d | 2023-09-07 A | 2023-09-07 | 23, 84 | 50% | 0.5d | 49d |
| 137 | 1.1.3.2.19.3 | LGOUT-1.3 | 1d | 2023-09-07 A | 2023-09-07 | 23, 84 | 50% | 0.5d | 49d |
| 138 | 1.1.3.2.20 | NFS-1 | 1d? | 2023-10-23 A | 2023-10-23 A | 24, 99 | 100% |  |  |
| 139 | 1.1.3.2.21 | NFCAP-1 | 2d | 2023-10-11 A | 2023-10-12 A | 24, 99 | 100% |  |  |
| 140 | 1.1.3.2.22 | NFCOMP-1 | 2d | 2023-10-13 A | 2023-10-16 A | 24, 139 | 100% |  |  |
| 141 | 1.1.3.2.23 | NFRA-1 | 2d | 2023-10-13 A | 2023-10-16 A | 24, 139 | 100% |  |  |
| 142 | 1.1.3.2.24 | NFMM-1 | 2d | 2023-10-17 A | 2023-10-18 A | 24, 141 | 100% |  |  |
| 143 | 1.1.3.2.25 | NFU-1 | 2d | 2023-10-19 A | 2023-10-20 A | 24, 141 | 100% |  |  |
| 144 | 1.1.3.2.26 | NFSC-1 | 2d | 2023-10-23 A | 2023-10-24 A | 24, 141 | 100% |  |  |
| 145 | 1.1.3.2.27 | NFPDAT-1 | 2d | 2023-10-25 A | 2023-10-26 | 24, 144 | 70% | 0.6d | 14d |
| 146 | 1.1.3.3 | **Test Plan Preparation** | 40d | 2023-08-28 | 2023-10-20 |  |  |  | 18d |
| 147 | 1.1.3.3.1 | Module 1 | 4d | 2023-08-31 | 2023-09-05 | 78 |  |  | 51d |
| 148 | 1.1.3.3.2 | Module 2 | 4d | 2023-08-30 | 2023-09-04 | 80 |  |  | 52d |
| 149 | 1.1.3.3.3 | Module 3A | 4d | 2023-08-31 | 2023-09-05 | 81 |  |  | 51d |
| 150 | 1.1.3.3.4 | Module 3B | 4d | 2023-08-28 | 2023-08-31 | 82 |  |  | 54d |
| 151 | 1.1.3.3.5 | Module 3C | 4d | 2023-10-17 | 2023-10-20 | 85 |  |  | 18d |
| 152 | 1.1.3.3.6 | Module 4A | 4d | 2023-09-14 | 2023-09-19 | 88 |  |  | 41d |
| 153 | 1.1.3.3.7 | Module 4B | 4d | 2023-09-20 | 2023-09-25 | 92 |  |  | 37d |

| ID | WBS | Task | Type | Duration | Start | Finish | Predecessors | Complete | Remaining | Total slack | Free slack |
| --- | --- | --- | --- | --- | --- | --- | --- | --- | --- | --- | --- |
| 154 | 1.1.4 | **Phase 1 Closure** |  | 4d | 2023-11-16 A | 2023-11-21 | 27 | 45% | 2.2d | 2d |  |
| 155 | 1.1.4.1 | Prepare 7th Semester Project Report |  | 3d | 2023-11-16 A | 2023-11-20 |  | 60% | 1.2d | 3d |  |
| 156 | 1.1.4.2 | Updated Requirement Matrix | milestone | 0d | 2023-11-20 A | 2023-11-20 A | 155 | 100% |  |  |  |
| 157 | 1.1.4.3 | Updated Project Plan | milestone | 0d | 2023-11-20 | 2023-11-20 | 156 |  |  | 2d | 0d |
| 158 | 1.1.4.4 | Project Viva |  | 1d | 2023-11-21 | 2023-11-21 | 157 |  |  | 2d | 0d |
| 159 | 1.1.4.5 | Approved Project Report - 7th Semester | milestone | 0d | 2023-11-21 | 2023-11-21 | 158 |  |  | 2d |  |
| 160 | 1.2 | Semester Gap |  | 32d | 2023-11-24 | 2024-01-08 | 2 |  |  | 0d |  |
| 161 | 1.3 | **Phase 2: 8th Semester Activities** |  | 105d | 2024-01-09 | 2024-06-03 | 160 |  |  | 0d |  |
| 162 | 1.3.1 | **Coding & Únit Testing** |  | 80d | 2024-01-09 | 2024-04-29 |  |  |  |  |  |
| 163 | 1.3.1.1 | TBD |  | 40d | 2024-01-09 | 2024-03-04 |  |  |  | 40d |  |
| 164 | 1.3.2 | **System Integration Testing** |  | 10d | 2024-04-30 | 2024-05-13 | 162 |  |  | 0d |  |
| 165 | 1.3.2.1 | TBD |  | 10d | 2024-04-30 | 2024-05-13 |  |  |  | 0d |  |
| 166 | 1.3.3 | **Project Closure** |  | 15d | 2024-05-14 | 2024-06-03 | 164 |  |  | 0d |  |
| 167 | 1.3.3.1 | Prepare 8th Semester Project Report |  | 14d | 2024-05-14 | 2024-05-31 |  |  |  | 0d |  |
| 168 | 1.3.3.2 | Updated Requirement Matrix | milestone | 0d | 2024-05-31 | 2024-05-31 | 167 |  |  | 0d |  |
| 169 | 1.3.3.3 | Updated Project Plan | milestone | 0d | 2024-05-31 | 2024-05-31 | 168 |  |  | 0d |  |
| 170 | 1.3.3.4 | Review by Faculties |  | 1d | 2024-06-03 | 2024-06-03 | 169 |  |  | 0d |  |
| 171 | 1.3.3.5 | Approved Project Report - 7th Semester | milestone | 0d | 2024-06-03 | 2024-06-03 | 170 |  |  | 0d |  |

Notes:
- 160: Some of the dates are indicative; should be updated with actuals. Holidays may be updated appropriately.
